# Launching a Food Truck in London, Ontario

Schedule from MS Project XML, 2026-09-08 to 2026-12-21.
SOW Enterprise

## Calendars

- Standard: Mon-Fri 08:00-12:00, 13:00-17:00; Sat-Sun off. Exceptions (off unless hours are given): 2026-10-12 (Thanksgiving Day).

## Resources

| Resource | Group | Notes |
| --- | --- | --- |
| Project Manager – Shah Masoom Kshitij | Project team | Leads the project; chairs meetings; Sponsor liaison; change control; risk and issue management. |
| Planning Coordinator – Adeniji Adekunle | Project team | Maintains the schedule baseline and project file; event pipeline and booking calendar; runs coordination meetings. |
| Finance Head – Alain Rivera Sanchez | Project team | Budget, procurement and contracts; supplier quotes and payments; insurance and WSIB evidence. |
| Deliverables Analyst – Himanshu Verma | Project team | Deliverables and compliance lead; validates requirements; permits and inspections; quality checks; staff compliance records. |
| Project Sponsor – Nessen Ramsamy | Sponsor | Approves scope, baselines, menu and pricing, go/no-go and handover; removes obstacles; approver time only. |
| Kitchen Lead (restaurant chef) | Restaurant staff | Menu and costing; kitchen workflow input; food-preparation training; supply quantities. |
| Restaurant Operations Lead | Restaurant staff | Supply and inventory; loading, towing and set-up procedures; crew scheduling; POS operating requirements. |
| Marketing and Social Media Coordinator | Restaurant staff | Brand content; website profile and booking form; social media and announcements; pilot promotion. |
| Event Cook / Grill Operator | Event crew | Cooks and operates the grill; trained and certified for food handling; readiness testing and pilot service. |
| Event Cashier / POS Operator | Event crew | Takes orders and payments; POS user testing; readiness testing and pilot service. |
| Event Customer-Service Attendant | Event crew | Customer service and order hand-off; readiness testing and pilot service. |
| Trailer and Equipment Supplier | External supplier / contractor | Supplies and delivers the trailer and major equipment. |
| Fit-Out Contractor (installation crew) | External supplier / contractor | Installs kitchen equipment and fixtures (two-person crew). |
| Licensed Trades Contractor (gas / electrical / plumbing) | External supplier / contractor | TSSA-certified gas and propane, ESA-licensed electrical, plumbing and fire-suppression installation (two-person crew). |
| POS Vendor Technician | External supplier / contractor | Supplies, installs and configures POS hardware, network and software. |
| Graphic Designer and Wrap Installer | External supplier / contractor | Designs and installs the exterior wrap, signage and menu displays. |

## Schedule

| ID | WBS | Task | Duration | Start | Finish | Predecessors | Resources | Work |
| --- | --- | --- | --- | --- | --- | --- | --- | --- |
| 1 | 1 | **Launching a Food Truck in London, Ontario** | 74d | 2026-09-08 | 2026-12-21 |  |  | 2201h |
| 2 | 1.1 | **Project definition and planning** | 10d | 2026-09-08 | 2026-09-21 |  |  | 152h |
| 3 | 1.1.1 | Approved food truck concept | 5d | 2026-09-08 | 2026-09-14 |  | Project Manager – Shah Masoom Kshitij [40%]; Deliverables Analyst – Himanshu Verma [60%]; Planning Coordinator – Adeniji Adekunle [20%]; Finance Head – Alain Rivera Sanchez [20%]; Kitchen Lead (restaurant chef) [15%]; Project Sponsor – Nessen Ramsamy [10%] | 66h |
| 4 | 1.1.2 | Approved project planning package | 5d | 2026-09-15 | 2026-09-21 | 3 | Project Manager – Shah Masoom Kshitij [60%]; Planning Coordinator – Adeniji Adekunle [60%]; Finance Head – Alain Rivera Sanchez [50%]; Deliverables Analyst – Himanshu Verma [30%]; Project Sponsor – Nessen Ramsamy [15%] | 86h |
| 5 | 1.2 | **Permits, licences and compliance** | 52d | 2026-09-22 | 2026-12-03 |  |  | 230h |
| 6 | 1.2.1 | Validated operating requirements | 10d | 2026-09-22 | 2026-10-05 | 4 | Deliverables Analyst – Himanshu Verma [70%]; Finance Head – Alain Rivera Sanchez [15%]; Restaurant Operations Lead [7.5%]; Project Manager – Shah Masoom Kshitij [10%] | 82h |
| 7 | 1.2.2 | Trailer approvals and inspection records | 15d | 2026-11-13 | 2026-12-03 | 12, 13 | Deliverables Analyst – Himanshu Verma [45%]; Project Manager – Shah Masoom Kshitij [13.33%]; Licensed Trades Contractor (gas / electrical / plumbing) [20%]; Restaurant Operations Lead [5%]; Planning Coordinator – Adeniji Adekunle [6.67%] | 108h |
| 8 | 1.2.3 | Staff compliance documentation package | 8d | 2026-11-09 | 2026-11-18 | 22SS+5d | Deliverables Analyst – Himanshu Verma [25%]; Finance Head – Alain Rivera Sanchez [25%]; Planning Coordinator – Adeniji Adekunle [12.5%] | 40h |
| 9 | 1.3 | **Food trailer infrastructure and fit-out** | 27d | 2026-10-06 | 2026-11-12 |  |  | 610h |
| 10 | 1.3.1 | Acquired trailer and equipment | 7d | 2026-10-06 | 2026-10-15 | 6 | Finance Head – Alain Rivera Sanchez [50%]; Project Manager – Shah Masoom Kshitij [21.43%]; Deliverables Analyst – Himanshu Verma [21.43%]; Restaurant Operations Lead [10.71%]; Trailer and Equipment Supplier [28.57%] | 74h |
| 11 | 1.3.2 | Approved operational layout | 5d | 2026-10-16 | 2026-10-22 | 10 | Deliverables Analyst – Himanshu Verma [40%]; Kitchen Lead (restaurant chef) [15%]; Restaurant Operations Lead [15%]; Project Manager – Shah Masoom Kshitij [20%]; Fit-Out Contractor (installation crew) [40%] | 52h |
| 12 | 1.3.3 | Installed kitchen equipment and fixtures | 15d | 2026-10-23 | 2026-11-12 | 11 | Fit-Out Contractor (installation crew) [200%]; Deliverables Analyst – Himanshu Verma [10%]; Project Manager – Shah Masoom Kshitij [10%]; Restaurant Operations Lead [5%] | 270h |
| 13 | 1.3.4 | Installed utilities and safety systems | 12d | 2026-10-23 | 2026-11-09 | 11 | Licensed Trades Contractor (gas / electrical / plumbing) [200%]; Deliverables Analyst – Himanshu Verma [12.5%]; Project Manager – Shah Masoom Kshitij [10.42%] | 214h |
| 14 | 1.4 | **Technology and payment systems** | 25d | 2026-10-20 | 2026-11-23 |  |  | 154h |
| 15 | 1.4.1 | Procured POS and technology package | 5d | 2026-10-20 | 2026-10-26 | 11SS+2d | Finance Head – Alain Rivera Sanchez [40%]; POS Vendor Technician [30%]; Restaurant Operations Lead [15%] | 34h |
| 16 | 1.4.2 | Configured POS and network | 5d | 2026-11-10 | 2026-11-16 | 13, 15 | POS Vendor Technician [90%]; Finance Head – Alain Rivera Sanchez [20%]; Event Cashier / POS Operator [20%] | 52h |
| 17 | 1.4.3 | Loaded menu and verified transaction flow | 5d | 2026-11-17 | 2026-11-23 | 16, 19 | POS Vendor Technician [40%]; Kitchen Lead (restaurant chef) [30%]; Event Cashier / POS Operator [40%]; Event Cook / Grill Operator [20%]; Event Customer-Service Attendant [20%]; Planning Coordinator – Adeniji Adekunle [10%]; Restaurant Operations Lead [10%] | 68h |
| 18 | 1.5 | **Menu, supply and inventory** | 23d | 2026-10-09 | 2026-11-11 |  |  | 126h |
| 19 | 1.5.1 | Approved menu and pricing plan | 15d | 2026-10-09 | 2026-10-30 | 6, 10SS+3d | Kitchen Lead (restaurant chef) [33.33%]; Finance Head – Alain Rivera Sanchez [20%]; Restaurant Operations Lead [5%]; Project Manager – Shah Masoom Kshitij [10%]; Project Sponsor – Nessen Ramsamy [3.33%] | 86h |
| 20 | 1.5.2 | Supply and inventory plan | 8d | 2026-11-02 | 2026-11-11 | 19 | Restaurant Operations Lead [12.5%]; Kitchen Lead (restaurant chef) [12.5%]; Finance Head – Alain Rivera Sanchez [25%]; Planning Coordinator – Adeniji Adekunle [12.5%] | 40h |
| 21 | 1.6 | **Staffing and operating logistics** | 18d | 2026-10-28 | 2026-11-20 |  |  | 164h |
| 22 | 1.6.1 | Qualified and trained staffing plan | 15d | 2026-11-02 | 2026-11-20 | 19, 23SS+3d | Restaurant Operations Lead [10%]; Kitchen Lead (restaurant chef) [16.67%]; Deliverables Analyst – Himanshu Verma [6.67%]; Project Manager – Shah Masoom Kshitij [10%]; Event Cook / Grill Operator [16.67%]; Event Cashier / POS Operator [16.67%]; Event Customer-Service Attendant [16.67%] | 112h |
| 23 | 1.6.2 | Transport and operating procedures | 12d | 2026-10-28 | 2026-11-12 | 11, 12FF, 13FF | Restaurant Operations Lead [16.67%]; Kitchen Lead (restaurant chef) [8.33%]; Project Manager – Shah Masoom Kshitij [8.33%]; Deliverables Analyst – Himanshu Verma [8.33%]; Planning Coordinator – Adeniji Adekunle [12.5%] | 52h |
| 24 | 1.7 | **Branding, marketing and booking channels** | 27d | 2026-10-23 | 2026-11-30 |  |  | 214h |
| 25 | 1.7.1 | Completed branding and customer materials | 15d | 2026-10-23 | 2026-11-12 | 11, 19FF | Graphic Designer and Wrap Installer [66.67%]; Marketing and Social Media Coordinator [30%]; Project Manager – Shah Masoom Kshitij [6.67%]; Kitchen Lead (restaurant chef) [3.33%] | 128h |
| 26 | 1.7.2 | Launch promotion and booking channels | 12d | 2026-11-13 | 2026-11-30 | 25 | Marketing and Social Media Coordinator [45.83%]; Planning Coordinator – Adeniji Adekunle [16.67%]; Graphic Designer and Wrap Installer [12.5%]; Finance Head – Alain Rivera Sanchez [8.33%]; Project Manager – Shah Masoom Kshitij [6.25%] | 86h |

Notes:
- 3: Activity SOW (Assignment 1 activity list)
- 4: Activity SOW (Assignment 1 activity list)
- 6: Activity 1 (Assignment 1 activity list)
- 7: Activity 2 (Assignment 1 activity list)
- 8: Activity 3 (Assignment 1 activity list)
- 10: Activity 4 (Assignment 1 activity list)
- 11: Activity 5 (Assignment 1 activity list)
- 12: Activity 6 (Assignment 1 activity list)
- 13: Activity 7 (Assignment 1 activity list)
- 15: Activity 8 (Assignment 1 activity list)
- 16: Activity 9 (Assignment 1 activity list)
- 17: Activity 10 (Assignment 1 activity list)
- 19: Activity 11 (Assignment 1 activity list)
- 20: Activity 12 (Assignment 1 activity list)
- 22: Activity 13 (Assignment 1 activity list)
- 23: Activity 14 (Assignment 1 activity list)
- 25: Activity 15 (Assignment 1 activity list)
- 26: Activity 16 (Assignment 1 activity list)

| ID | WBS | Task | Type | Duration | Start | Finish | Predecessors | Resources | Work |
| --- | --- | --- | --- | --- | --- | --- | --- | --- | --- |
| 27 | 1.8 | **Locations and event planning** |  | 39d | 2026-10-06 | 2026-11-30 |  |  | 164h |
| 28 | 1.8.1 | Event and catering opportunity pipeline |  | 25d | 2026-10-06 | 2026-11-10 | 6 | Planning Coordinator – Adeniji Adekunle [25%]; Project Manager – Shah Masoom Kshitij [12%]; Marketing and Social Media Coordinator [12%]; Finance Head – Alain Rivera Sanchez [6%] | 110h |
| 29 | 1.8.2 | Booking calendar and pilot event plan |  | 6d | 2026-11-23 | 2026-11-30 | 20, 22, 23, 28 | Planning Coordinator – Adeniji Adekunle [41.67%]; Restaurant Operations Lead [25%]; Kitchen Lead (restaurant chef) [12.5%]; Project Manager – Shah Masoom Kshitij [25%]; Finance Head – Alain Rivera Sanchez [8.33%] | 54h |
| 30 | 1.9 | **Pilot launch and operational handover** |  | 12d | 2026-12-04 | 2026-12-21 |  |  | 387h |
| 31 | 1.9.1 | Readiness test results and completed pilot |  | 10d | 2026-12-04 | 2026-12-17 | 7, 8, 17, 26, 29 | Project Manager – Shah Masoom Kshitij [50%]; Deliverables Analyst – Himanshu Verma [50%]; Restaurant Operations Lead [30%]; Kitchen Lead (restaurant chef) [25%]; POS Vendor Technician [10%]; Event Cook / Grill Operator [67.5%]; Event Cashier / POS Operator [67.5%]; Event Customer-Service Attendant [67.5%]; Planning Coordinator – Adeniji Adekunle [20%]; Finance Head – Alain Rivera Sanchez [15%]; Marketing and Social Media Coordinator [20%]; Project Sponsor – Nessen Ramsamy [7.5%]; Licensed Trades Contractor (gas / electrical / plumbing) [7.5%] | 350h |
| 32 | 1.9.2 | Corrective actions and handover package |  | 2d | 2026-12-18 | 2026-12-21 | 31 | Project Manager – Shah Masoom Kshitij [75%]; Deliverables Analyst – Himanshu Verma [50%]; Planning Coordinator – Adeniji Adekunle [37.5%]; Finance Head – Alain Rivera Sanchez [25%]; Restaurant Operations Lead [25%]; Project Sponsor – Nessen Ramsamy [18.75%] | 37h |
| 33 | 2 | **Key Milestones** |  | 74d | 2026-09-15 | 2026-12-21 |  |  |  |
| 34 | 2.1 | M1 Concept, objectives and SOW approved | milestone | 0d | 2026-09-21 | 2026-09-21 | 4 | Project Sponsor – Nessen Ramsamy; Project Manager – Shah Masoom Kshitij |  |
| 35 | 2.2 | M2 Compliance path confirmed | milestone | 0d | 2026-10-05 | 2026-10-05 | 6 | Deliverables Analyst – Himanshu Verma; Project Manager – Shah Masoom Kshitij |  |
| 36 | 2.3 | M3 Trailer and equipment acquired | milestone | 0d | 2026-10-15 | 2026-10-15 | 10 | Finance Head – Alain Rivera Sanchez; Project Manager – Shah Masoom Kshitij |  |
| 37 | 2.4 | M4 Unit fit-out complete and ready for inspection | milestone | 0d | 2026-11-12 | 2026-11-12 | 12, 13 | Deliverables Analyst – Himanshu Verma; Project Manager – Shah Masoom Kshitij |  |
| 38 | 2.5 | M5 Menu and pricing frozen | milestone | 0d | 2026-10-30 | 2026-10-30 | 19 | Kitchen Lead (restaurant chef); Project Sponsor – Nessen Ramsamy |  |
| 39 | 2.6 | M6 Staff trained; compliance package complete | milestone | 0d | 2026-11-20 | 2026-11-20 | 22, 8 | Restaurant Operations Lead; Deliverables Analyst – Himanshu Verma |  |
| 40 | 2.7 | M7 Go/no-go readiness review passed | milestone | 0d | 2026-12-15 | 2026-12-15 | 31SS+7d | Project Sponsor – Nessen Ramsamy; Project Manager – Shah Masoom Kshitij |  |
| 41 | 2.8 | M8 Pilot event completed | milestone | 0d | 2026-12-17 | 2026-12-17 | 31 | Restaurant Operations Lead; Project Manager – Shah Masoom Kshitij |  |
| 42 | 2.9 | M9 Handover and project closure | milestone | 0d | 2026-12-21 | 2026-12-21 | 32 | Project Sponsor – Nessen Ramsamy; Project Manager – Shah Masoom Kshitij |  |

Notes:
- 28: Activity 17 (Assignment 1 activity list)
- 29: Activity 18 (Assignment 1 activity list)
- 31: Activity 19 (Assignment 1 activity list)
- 32: Activity 20 (Assignment 1 activity list)
